# 20151005_Plan de Proyecto_Megacable

How a schedule from MS Project changed from version to version. A marks actual dates.

## Version 1 (saved 2015-10-30, file 20151005_Plan de Proyecto_Megacable.mpp)

Note of the change: Megacable

| ID | WBS | Task | Duration | Start | Finish | Predecessors | Complete | Total float | Constraint |
| --- | --- | --- | --- | --- | --- | --- | --- | --- | --- |
| 1 | 1 | **2a Etapa Megacable** | 94d | 2015-10-05 A | 2016-02-24 |  | 45% | 0d |  |
| 2 | 1.1 | **Eventos especiales** | 35d | 2015-10-05 A | 2015-11-23 |  | 51% | 59d |  |
| 3 |  | Playback Requerimiento | 1d | 2015-10-05 A | 2015-10-05 A |  | 100% |  | start no earlier than 2015-10-05 |
| 4 |  | Confirmación Requerimiento | 1d | 2015-10-06 A | 2015-10-06 A | 3 | 100% |  |  |
| 5 | 1.1.3 | **Generar los Cortes** | 15d | 2015-10-07 A | 2015-10-27 |  | 75% | 77d |  |
| 6 |  | Diseño y Lógica del Corte Especial | 1d | 2015-10-07 A | 2015-10-07 A | 4 | 100% |  |  |
| 7 |  | Desarrollo | 10d | 2015-10-08 A | 2015-10-21 A | 6 | 100% |  |  |
| 8 |  | Pruebas Unitarias | 1d | 2015-10-22 A | 2015-10-22 | 7 | 25% | 77d |  |
| 9 |  | Corrección de Defectos | 3d | 2015-10-23 | 2015-10-27 | 8 |  | 77d |  |
| 10 | 1.1.4 | **Venta Evento Especial** | 18d | 2015-10-28 A | 2015-11-23 |  | 25% | 59d |  |
| 11 |  | Desarrollar Reglas de Negocio | 2d | 2015-10-28 A | 2015-10-29 A | 9 | 100% |  |  |
| 12 |  | Ajuste al Sistema de Prioridades | 2d | 2015-10-30 A | 2015-11-02 A | 11 | 100% |  |  |
| 13 |  | Pruebas Unitarias | 1d | 2015-11-03 A | 2015-11-03 | 12 | 50% | 59d |  |
| 14 |  | Corrección de Defectos | 3d | 2015-11-04 | 2015-11-06 | 13 |  | 59d |  |
| 15 |  | Interfase de Venta | 10d | 2015-11-09 | 2015-11-23 | 14 |  | 59d |  |
| 16 | 1.2 | **Paquete** | 43d | 2015-11-24 A | 2016-02-02 |  | 47% | 0d |  |
| 17 |  | Playback Requerimiento | 1d | 2015-11-24 A | 2015-11-24 A | 15 | 100% |  |  |
| 18 |  | Confirmación Requerimiento | 1d | 2015-11-25 A | 2015-11-25 A | 17 | 100% |  |  |
| 19 | 1.2.3 | **Diseño Paquete** | 17d | 2015-11-26 A | 2015-12-18 |  | 59% | 0.85d |  |
| 20 |  | Diseño | 1d | 2015-11-26 A | 2015-11-26 A | 18 | 100% |  |  |
| 21 |  | Reglas y campos de cada Producto | 2d | 2015-11-27 A | 2015-11-30 | 20 | 75% | 7.5d |  |
| 22 |  | Desarrollo | 10d | 2015-12-01 A | 2015-12-14 | 21 | 75% | 0.1d |  |
| 23 |  | Pruebas Unitarias | 1d | 2015-12-15 A | 2015-12-15 | 22 | 10% | 0.85d |  |
| 24 |  | Corrección de Defectos | 3d | 2015-12-16 | 2015-12-18 | 23 |  | 0.85d |  |
| 25 | 1.2.4 | **Venta Paquete** | 21d | 2015-12-21 A | 2016-01-27 |  | 39% | 0d |  |
| 26 | 1.2.4.1 | **Definición** | 7d | 2015-12-21 A | 2016-01-07 |  | 16% | 7d |  |
| 27 |  | Reglas de Interfase de Venta | 1d | 2015-12-21 A | 2015-12-21 | 24 | 85% | 0.25d |  |
| 28 |  | Reglas para mapear Productos | 1d | 2015-12-22 A | 2015-12-22 | 27 | 25% | 7d |  |
| 29 |  | Implementar las reglas de Venta | 5d | 2015-12-23 | 2016-01-07 | 28 |  | 7d |  |
| 30 |  | Desarrollo | 10d | 2016-01-08 A | 2016-01-21 | 29 | 70% | 0d |  |
| 31 |  | Pruebas Unitarias | 1d | 2016-01-22 | 2016-01-22 | 30 |  | 0d |  |
| 32 |  | Corrección de Defectos | 3d | 2016-01-25 | 2016-01-27 | 31 |  | 0d |  |
| 33 |  | Ajuste de nueva Interfase | 3d | 2016-01-28 | 2016-02-02 | 32 |  | 0d |  |
| 34 | 1.3 | **Intercambios** | 25d | 2015-10-05 A | 2015-11-06 |  | 55% | 2d |  |
| 35 |  | Análisis del Requerimiento | 2d | 2015-10-05 A | 2015-10-06 |  | 70% | 0.7d | start no earlier than 2015-10-05 |
| 36 |  | Playback del Requerimiento | 1d | 2015-10-07 A | 2015-10-07 | 35 | 70% | 1.8d |  |
| 37 |  | Confirmación Requerimiento | 1d | 2015-10-08 | 2015-10-08 | 36 |  | 1.8d |  |
| 38 |  | Diseño y Lógica de Intercambios | 3d | 2015-10-09 A | 2015-10-13 | 37 | 60% | 2.8d |  |
| 39 |  | Reglas | 4d | 2015-10-14 A | 2015-10-19 | 38 | 70% | 7d |  |
| 40 |  | Desarrollo | 10d | 2015-10-20 A | 2015-11-02 | 39 | 70% | 0.1d |  |
| 41 |  | Pruebas Unitarias | 1d | 2015-11-03 A | 2015-11-03 | 40 | 10% | 2d |  |
| 42 |  | Corrección de Defectos | 3d | 2015-11-04 | 2015-11-06 | 41 |  | 2d |  |
| 43 | 1.4 | **Pautado** | 21d | 2015-10-05 A | 2015-11-02 |  | 93% | 73d |  |
| 44 |  | Playback Requerimiento | 2d | 2015-10-05 A | 2015-10-06 A |  | 100% |  | start no earlier than 2015-10-05 |
| 45 |  | Confirmación Requerimiento | 2d | 2015-10-07 A | 2015-10-08 A | 44 | 100% |  |  |
| 46 |  | Diseño Pautado | 3d | 2015-10-09 A | 2015-10-13 A | 45 | 100% |  |  |
| 47 |  | Desarrollo | 10d | 2015-10-14 A | 2015-10-27 A | 46 | 100% |  |  |
| 48 |  | Pruebas Unitarias | 1d | 2015-10-28 A | 2015-10-28 A | 47 | 100% |  |  |
| 49 |  | Corrección de Defectos | 3d | 2015-10-29 A | 2015-11-02 | 48 | 50% | 73d |  |
| 50 | 1.5 | **Sistema de comisiones** | 27d | 2015-11-09 A | 2015-12-16 |  | 31% | 26d |  |
| 51 |  | Análisis del Requerimiento | 4d | 2015-11-09 A | 2015-11-12 | 42 | 50% | 0.5d |  |
| 52 |  | Playback del Requerimiento | 1d | 2015-11-13 A | 2015-11-13 | 51 | 50% | 1.5d |  |
| 53 |  | Confirmación Requerimiento | 1d | 2015-11-17 | 2015-11-17 | 52 |  | 1.5d |  |
| 54 |  | Diseño y Lógica de Sistema de Comisiones | 3d | 2015-11-18 A | 2015-11-20 | 53 | 50% | 2d |  |
| 55 |  | Reglas | 4d | 2015-11-23 A | 2015-11-26 | 54 | 50% | 2.5d |  |
| 56 |  | Desarrollo | 10d | 2015-11-27 A | 2015-12-10 | 55 | 25% | 26d |  |
| 57 |  | Pruebas Unitarias | 1d | 2015-12-11 | 2015-12-11 | 56 |  | 26d |  |
| 58 |  | Corrección de Defectos | 3d | 2015-12-14 | 2015-12-16 | 57 |  | 26d |  |
| 59 | 1.6 | **Ciclo 1 Pruebas Integrales** | 5d | 2016-02-03 | 2016-02-09 |  |  | 0d |  |
| 60 |  | Data Set Ciclo 1 Listo por Módulo | 1d | 2016-02-03 | 2016-02-03 | 58, 33 |  | 0d |  |
| 61 |  | Carga de datos por módulo | 1d | 2016-02-04 | 2016-02-04 | 60 |  | 0d |  |
| 62 |  | Prueba Punta a Punta | 1d | 2016-02-05 | 2016-02-05 | 61 |  | 0d |  |
| 63 |  | Gestión de Defectos en Datos y Módulos - 1 | 3d | 2016-02-05 | 2016-02-09 | 62SS |  | 0d |  |
| 64 |  | Informe de Resultados | 1d | 2016-02-09 | 2016-02-09 | 63FF |  | 0d |  |
| 65 | 1.7 | **Ciclo 2 Pruebas Integrales** | 5d | 2016-02-10 | 2016-02-16 |  |  | 0d |  |
| 66 |  | Data Set Ciclo 1 Listo por Módulo | 1d | 2016-02-10 | 2016-02-10 | 64 |  | 0d |  |
| 67 |  | Carga de datos por módulo | 1d | 2016-02-11 | 2016-02-11 | 66 |  | 0d |  |
| 68 |  | Prueba Punta a Punta | 1d | 2016-02-12 | 2016-02-12 | 67 |  | 0d |  |
| 69 |  | Gestión de Defectos en Datos y Módulos - 1 | 3d | 2016-02-12 | 2016-02-16 | 68SS |  | 0d |  |
| 70 |  | Informe de Resultados | 1d | 2016-02-16 | 2016-02-16 | 69FF |  | 0d |  |

| ID | WBS | Task | Duration | Start | Finish | Predecessors | Total float |
| --- | --- | --- | --- | --- | --- | --- | --- |
| 71 | 1.8 | **Ciclo UAT** | 3d | 2016-02-17 | 2016-02-19 |  | 0d |
| 72 |  | Data Set Ciclo 1 Listo por Módulo | 1d | 2016-02-17 | 2016-02-17 | 70 | 0d |
| 73 |  | Carga de datos por módulo | 1d | 2016-02-18 | 2016-02-18 | 72 | 0d |
| 74 |  | Prueba Punta a Punta | 1d | 2016-02-19 | 2016-02-19 | 73 | 0d |
| 75 |  | Gestión de Defectos en Datos y Módulos - 1 | 1d | 2016-02-19 | 2016-02-19 | 74SS | 0d |
| 76 |  | Informe de Resultados | 1d | 2016-02-19 | 2016-02-19 | 75FF | 0d |
| 77 |  | Training | 5d | 2016-02-10 | 2016-02-16 | 66SS | 4d |
| 78 |  | Cutover | 1d | 2016-02-22 | 2016-02-22 | 76 | 0d |
| 79 |  | Go Live (1 Sistema) | 1d | 2016-02-23 | 2016-02-23 | 78, 77 | 0d |
| 80 |  | Handover Protocol | 1d | 2016-02-24 | 2016-02-24 | 79 | 0d |

## Version 2 (saved 2015-11-25, file 20151125_Plan de Proyecto_Megacable.mpp)

Note of the change: Megacable

Last finish stays 2016-02-24. Complete tasks 14 → 37.

Added:

| ID | Task | Duration | Start | Finish | Predecessors | Resources |
| --- | --- | --- | --- | --- | --- | --- |
| 50 | **Materiales** | 27d | 2015-11-09 A | 2015-12-16 A |  |  |
| 51 | Análisis del Requerimiento | 4d | 2015-11-09 A | 2015-11-12 A | 42 | Pablo |
| 52 | Playback del Requerimiento | 1d | 2015-11-13 A | 2015-11-13 A | 51 | Pablo |
| 53 | Confirmación Requerimiento | 1d | 2015-11-17 A | 2015-11-17 A | 52 | Pablo |
| 54 | Diseño y Lógica de Sistema de Materiales | 3d | 2015-11-18 A | 2015-11-20 A | 53 | Pablo |
| 55 | Reglas | 4d | 2015-11-23 A | 2015-11-26 A | 54 | Pablo |
| 56 | Desarrollo | 10d | 2015-11-27 A | 2015-12-10 A | 55 | Pablo |
| 57 | Pruebas Unitarias | 1d | 2015-12-11 A | 2015-12-11 A | 56 | Pablo |
| 58 | Corrección de Defectos | 3d | 2015-12-14 A | 2015-12-16 A | 57 | Pablo |
| 59 | **Versionado** | 22d | 2015-12-17 A | 2016-01-26 |  |  |
| 60 | Análisis del Requerimiento | 4d | 2015-12-17 A | 2015-12-22 A | 58 | Pablo |
| 61 | Playback del Requerimiento | 1d | 2015-12-23 A | 2015-12-23 A | 60 | Pablo |
| 62 | Confirmación Requerimiento | 1d | 2016-01-04 A | 2016-01-04 A | 61 | Pablo |
| 63 | Diseño y Lógica de Sistema de versionado | 3d | 2016-01-05 A | 2016-01-07 A | 62 | Pablo |
| 64 | Reglas | 2d | 2016-01-08 A | 2016-01-11 | 63 | Pablo |
| 65 | Desarrollo | 5d | 2016-01-14 A | 2016-01-20 | 64 | Pablo |
| 66 | Pruebas Unitarias | 1d | 2016-01-21 | 2016-01-21 | 65 | Pablo |
| 67 | Corrección de Defectos | 3d | 2016-01-22 | 2016-01-26 | 66 | Pablo |
| 77 | **Facturación** | 27d | 2015-11-09 A | 2015-12-16 |  |  |
| 78 | Análisis del Requerimiento | 4d | 2015-11-09 A | 2015-11-12 A | 42 | Hansel |
| 79 | Playback del Requerimiento | 1d | 2015-11-13 A | 2015-11-13 | 78 | Hansel |
| 80 | Confirmación Requerimiento | 1d | 2015-11-17 | 2015-11-17 | 79 | Hansel |
| 81 | Diseño y Lógica de Sistema de Facturación | 3d | 2015-11-18 A | 2015-11-20 | 80 | Hansel |
| 82 | Reglas | 4d | 2015-11-23 A | 2015-11-26 | 81 | Hansel |
| 83 | Desarrollo | 10d | 2015-11-27 A | 2015-12-10 | 82 | Hansel |
| 84 | Pruebas Unitarias | 1d | 2015-12-11 | 2015-12-11 | 83 | Hansel |
| 85 | Corrección de Defectos | 3d | 2015-12-14 | 2015-12-16 | 84 | Hansel |

Changed:

| ID | Task | Start | Finish | Duration | Complete | Total float | Predecessors |
| --- | --- | --- | --- | --- | --- | --- | --- |
| 1 | **2a Etapa Megacable** |  |  |  | 45% → 60% |  |  |
| 2 | **Eventos especiales** |  | 2015-11-23 A |  | 51% → 100% | 59d → none |  |
| 5 | **Generar los Cortes** |  | 2015-10-27 A |  | 75% → 100% | 77d → none |  |
| 8 | Pruebas Unitarias |  | 2015-10-22 A |  | 25% → 100% | 77d → none |  |
| 9 | Corrección de Defectos | 2015-10-23 A | 2015-10-27 A |  | 0% → 100% | 77d → none |  |
| 10 | **Venta Evento Especial** |  | 2015-11-23 A |  | 25% → 100% | 59d → none |  |
| 13 | Pruebas Unitarias |  | 2015-11-03 A |  | 50% → 100% | 59d → none |  |
| 14 | Corrección de Defectos | 2015-11-04 A | 2015-11-06 A |  | 0% → 100% | 59d → none |  |
| 15 | Interfase de Venta | 2015-11-09 A | 2015-11-23 A |  | 0% → 100% | 59d → none |  |
| 16 | **Paquete** |  |  |  | 47% → 61% |  |  |
| 19 | **Diseño Paquete** |  | 2015-12-18 A |  | 59% → 100% | 0.85d → none |  |
| 21 | Reglas y campos de cada Producto |  | 2015-11-30 A |  | 75% → 100% | 7.5d → none |  |
| 22 | Desarrollo |  | 2015-12-14 A |  | 75% → 100% | 0.1d → none |  |
| 23 | Pruebas Unitarias |  | 2015-12-15 A |  | 10% → 100% | 0.85d → none |  |
| 24 | Corrección de Defectos | 2015-12-16 A | 2015-12-18 A |  | 0% → 100% | 0.85d → none |  |
| 25 | **Venta Paquete** |  |  |  | 39% → 34% |  |  |
| 30 | Desarrollo |  |  |  | 70% → 60% |  |  |
| 43 | **Pautado** |  | 2015-11-02 A |  | 93% → 100% | 73d → none |  |
| 49 | Corrección de Defectos |  | 2015-11-02 A |  | 50% → 100% | 73d → none |  |
| 87 | Data Set Ciclo 1 Listo por Módulo |  |  |  |  |  | 76, 33 → 76, 33, 85, 58, 67 |
| 92 | **Ciclo 2 Pruebas Integrales** |  | 2016-02-16 → 2016-02-24 (+8d) | 5d → 11d |  |  |  |

## Version 3 (saved 2016-01-11, file 20151214_Plan de Proyecto_Megacable.mpp)

Note of the change: Megacable

Last finish stays 2016-02-24. Complete tasks 37 → 43.

Added:

| ID | Task | Duration | Start | Finish | Predecessors | Resources |
| --- | --- | --- | --- | --- | --- | --- |
| 86 | **SeaChange** | 21d | 2015-12-17 A | 2016-01-25 |  |  |
| 87 | Análisis del Requerimiento | 3d | 2015-12-17 A | 2015-12-21 | 85 | Eduardo |
| 88 | Playback del Requerimiento | 1d | 2015-12-22 A | 2015-12-22 | 87 | Eduardo |
| 89 | Confirmación Requerimiento | 1d | 2015-12-23 A | 2015-12-23 | 88 | Eduardo |
| 90 | Diseño y Lógica de SeaChange | 3d | 2016-01-04 A | 2016-01-06 | 89 | Eduardo |
| 91 | Reglas | 2d | 2016-01-07 | 2016-01-08 | 90 | Eduardo |
| 92 | Desarrollo | 7d | 2016-01-11 | 2016-01-19 | 91 | Eduardo |
| 93 | Pruebas Unitarias | 1d | 2016-01-20 | 2016-01-20 | 92 | Eduardo |
| 94 | Corrección de Defectos | 3d | 2016-01-21 | 2016-01-25 | 93 | Eduardo |
| 95 | **Reportes** | 11d | 2015-12-17 A | 2016-01-11 |  |  |
| 96 | Desarrollo | 7d | 2015-12-17 A | 2016-01-05 | 68 | Hansel |
| 97 | Pruebas Unitarias | 1d | 2016-01-06 A | 2016-01-06 | 96 | Hansel |
| 98 | Corrección de Defectos | 3d | 2016-01-07 | 2016-01-11 | 97 | Hansel |

Changed:

| ID | Task | Start | Finish | Complete | Total float | Predecessors |
| --- | --- | --- | --- | --- | --- | --- |
| 1 | **2a Etapa Megacable** |  |  | 60% → 65% |  |  |
| 16 | **Paquete** |  |  | 61% → 81% |  |  |
| 25 | **Venta Paquete** |  |  | 34% → 64% | 0d → 2.4d |  |
| 26 | **Definición** |  |  | 16% → 77% |  |  |
| 27 | Reglas de Interfase de Venta |  |  | 85% → 95% | 0.25d → 0.95d |  |
| 28 | Reglas para mapear Productos |  |  | 25% → 95% | 6d → 3.5d |  |
| 29 | Implementar las reglas de Venta | 2015-12-23 A |  | 0% → 70% |  |  |
| 31 | Pruebas Unitarias | 2016-01-22 A |  | 0% → 50% | 0d → 1.5d |  |
| 32 | Corrección de Defectos | 2016-01-25 A |  | 0% → 50% | 0d → 2.4d |  |
| 33 | Ajuste de nueva Interfase | 2016-01-28 A |  | 0% → 80% |  |  |
| 34 | **Intercambios** |  |  | 55% → 73% | 2d → 2.8d |  |
| 35 | Análisis del Requerimiento |  | 2015-10-06 A | 70% → 100% | 0.7d → none |  |
| 36 | Playback del Requerimiento |  | 2015-10-07 A | 70% → 100% | 1.8d → none |  |
| 37 | Confirmación Requerimiento | 2015-10-08 A |  | 0% → 10% | 1.8d → 2.25d |  |
| 38 | Diseño y Lógica de Intercambios |  |  | 60% → 75% | 2.8d → 3.6d |  |
| 39 | Reglas |  |  | 70% → 90% | 7d → 9d |  |
| 40 | Desarrollo |  |  | 70% → 90% | 0.1d → 0.35d |  |
| 41 | Pruebas Unitarias |  |  | 10% → 35% | 2d → 2.8d |  |
| 59 | **Versionado** |  | 2016-01-26 A | 52% → 100% | 4d → none |  |
| 64 | Reglas |  | 2016-01-11 A | 20% → 100% | 3d → none |  |
| 65 | Desarrollo |  | 2016-01-20 A | 20% → 100% | 4d → none |  |
| 66 | Pruebas Unitarias | 2016-01-21 A | 2016-01-21 A | 0% → 100% | 4d → none |  |
| 67 | Corrección de Defectos | 2016-01-22 A | 2016-01-26 A | 0% → 100% | 4d → none |  |
| 68 | **Sistema de comisiones** |  |  | 31% → 47% | 26d → 1.4d |  |
| 69 | Análisis del Requerimiento |  |  | 50% → 70% | 0.5d → 0.7d |  |
| 70 | Playback del Requerimiento |  |  | 50% → 70% | 1.5d → 0.7d |  |
| 71 | Confirmación Requerimiento | 2015-11-17 A |  | 0% → 70% | 1.5d → 2.1d |  |
| 72 | Diseño y Lógica de Sistema de Comisiones |  |  | 50% → 70% | 2d → 2.8d |  |
| 73 | Reglas |  |  | 50% → 70% | 2.5d → 3d |  |
| 74 | Desarrollo |  |  | 25% → 30% | 26d → 0.25d |  |
| 75 | Pruebas Unitarias | 2015-12-11 A |  | 0% → 25% | 26d → 0.3d |  |
| 76 | Corrección de Defectos | 2015-12-14 A |  | 0% → 10% | 26d → 1.4d |  |
| 77 | **Facturación** |  |  | 39% → 44% | 26d → 1.5d |  |
| 80 | Confirmación Requerimiento | 2015-11-17 A |  | 0% → 50% |  |  |
| 82 | Reglas |  |  | 50% → 70% |  |  |
| 84 | Pruebas Unitarias | 2015-12-11 A |  | 0% → 5% | 26d → 0.03d |  |
| 85 | Corrección de Defectos | 2015-12-14 A |  | 0% → 1% | 26d → 1.5d |  |
| 100 | Data Set Ciclo 1 Listo por Módulo |  |  |  |  | 76, 33, 85, 58, 67 → 76, 33, 85, 58, 67, 94, 98 |
